# Plan for Project Server 2013 deployment

Schedule from MS Project XML, 2025-01-27 to 2025-05-26.

## Calendars

- Standard: Mon-Fri 08:00-12:00, 13:00-17:00; Sat-Sun off.

## Resources

| Resource |
| --- |
| James |
| George |
| Catherine |
| Penelope |
| Ruby |
| Henry |

## Schedule

| ID | WBS | Task | Type | Duration | Start | Finish | Predecessors | Total slack | Constraint | Resources | Work |
| --- | --- | --- | --- | --- | --- | --- | --- | --- | --- | --- | --- |
| 1 | 1 | **Plan for Project Server 2013 deployment** |  | 86d | 2025-01-27 | 2025-05-26 |  | 0d |  |  | 864h |
| 2 | 1.1 | **Prepare for deployment** |  | 3d | 2025-01-27 | 2025-01-29 |  | 0d |  |  | 24h |
| 3 | 1.1.1 | Create users and groups in the Active Directory service |  | 3d | 2025-01-27 | 2025-01-29 |  | 0d | start no earlier than 2025-01-27 | Catherine | 24h |
| 4 | 1.1.2 | Prepare for development MILESTONE | milestone | 0d | 2025-01-29 | 2025-01-29 | 3 | 83d |  |  |  |
| 5 | 1.2 | **Configure SQL Server and Analysis Services** |  | 9d | 2025-01-30 | 2025-02-11 |  | 0d |  |  | 72h |
| 6 | 1.2.1 | Configure SQL Server network settings |  | 2d | 2025-01-30 | 2025-01-31 | 3 | 0d |  | George | 16h |
| 7 | 1.2.2 | Configure Analysis Services for building Project Server OLAP cubes |  | 4d | 2025-02-03 | 2025-02-06 | 6 | 0d |  | Henry | 32h |
| 8 | 1.2.3 | Create additional TempDB files |  | 3d | 2025-02-07 | 2025-02-11 | 7 | 0d |  | James | 24h |
| 9 | 1.2.4 | Configure SQL Server and Analysis Services MILESTONE | milestone | 0d | 2025-02-11 | 2025-02-11 | 8 | 74d |  |  |  |
| 10 | 1.3 | **Install SharePoint Server 2013** |  | 12d | 2025-02-12 | 2025-02-27 |  | 0d |  |  | 152h |
| 11 | 1.3.1 | Prepare the farm servers |  | 2d | 2025-02-12 | 2025-02-13 | 8 | 0d |  | Penelope; Ruby | 32h |
| 12 | 1.3.2 | Install SharePoint 2013 on the farm servers |  | 3d | 2025-02-14 | 2025-02-18 | 11 | 0d |  | Ruby | 24h |
| 13 | 1.3.3 | Create and configure the farm |  | 2d | 2025-02-19 | 2025-02-20 | 12 | 0d |  | George; James | 32h |
| 14 | 1.3.4 | Add web servers to the farm |  | 2d | 2025-02-21 | 2025-02-24 | 13 | 0d |  | Catherine | 16h |
| 15 | 1.3.5 | Perform administrative tasks |  | 3d | 2025-02-25 | 2025-02-27 | 14 | 0d |  | George; Henry | 48h |
| 16 | 1.3.6 | Install SharePoint Server 2013 MILESTONE | milestone | 0d | 2025-02-27 | 2025-02-27 | 15 | 62d |  |  |  |
| 17 | 1.4 | **Install and configure Project Server 2013** |  | 13d | 2025-02-28 | 2025-03-18 |  | 0d |  |  | 120h |
| 18 | 1.4.1 | Install Project Server 2013 |  | 2d | 2025-02-28 | 2025-03-03 | 15 | 0d |  | Ruby | 16h |
| 19 | 1.4.2 | Run the SharePoint Products and Technologies Configuration Wizard |  | 4d | 2025-03-04 | 2025-03-07 | 18 | 0d |  | Penelope | 32h |
| 20 | 1.4.3 | Install and configure Project Server 2013 MILESTONE | milestone | 0d | 2025-03-07 | 2025-03-07 | 19 | 56d |  |  |  |
| 21 | 1.4.4 | **Configure services** |  | 7d | 2025-03-10 | 2025-03-18 |  | 0d |  |  | 72h |
| 22 | 1.4.4.1 | Start the Project Server Application Service |  | 2d | 2025-03-10 | 2025-03-11 | 19 | 0d |  | Henry; Ruby | 32h |
| 23 | 1.4.4.2 | Register a managed account |  | 3d | 2025-03-12 | 2025-03-14 | 22 | 0d |  | Catherine | 24h |
| 24 | 1.4.4.3 | Create a Project Server service application |  | 2d | 2025-03-17 | 2025-03-18 | 23 | 0d |  | Penelope | 16h |
| 25 | 1.4.4.4 | Configure services MILESTONE | milestone | 0d | 2025-03-18 | 2025-03-18 | 24 | 49d |  |  |  |

Notes:
- 1: http://go.microsoft.com/fwlink/p/?LinkID=257341
- 2: http://go.microsoft.com/fwlink/p/?LinkId=257342
- 5: http://go.microsoft.com/fwlink/p/?LinkId=257344
- 10: http://go.microsoft.com/fwlink/p/?LinkId=257345
- 15: Configure: / Usage and health data collection / Diagnostic logging / Incoming email / Outgoing email / Search settings
- 17: http://go.microsoft.com/fwlink/p/?LinkId=257346

| ID | WBS | Task | Type | Duration | Start | Finish | Predecessors | Total slack | Resources | Work |
| --- | --- | --- | --- | --- | --- | --- | --- | --- | --- | --- |
| 26 | 1.5 | **Create a Project Web App site** |  | 33d | 2025-03-19 | 2025-05-02 |  | 0d |  | 328h |
| 27 | 1.5.1 | **Deploy Project Web App with a new site collection** |  | 5d | 2025-03-19 | 2025-03-25 |  | 0d |  | 40h |
| 28 | 1.5.1.1 | Create a top-level Web site |  | 2d | 2025-03-19 | 2025-03-20 | 24 | 0d | James | 16h |
| 29 | 1.5.1.2 | Create a Project Web App site |  | 3d | 2025-03-21 | 2025-03-25 | 28 | 0d | Penelope | 24h |
| 30 | 1.5.2 | **Deploy Project Web App in an existing site collection** |  | 28d | 2025-03-26 | 2025-05-02 |  | 0d |  | 288h |
| 31 | 1.5.2.1 | **Enable the Project Web App site collection features** |  | 20d | 2025-03-26 | 2025-04-22 |  | 0d |  | 160h |
| 32 | 1.5.2.1.1 | Create a Project Web App database |  | 8d | 2025-03-26 | 2025-04-04 | 29 | 0d | Catherine | 64h |
| 33 | 1.5.2.1.2 | Enable the Project Web App site collection features |  | 12d | 2025-04-07 | 2025-04-22 | 32 | 0d | Henry | 96h |
| 34 | 1.5.2.2 | Create a Project Web App site in an existing site collection |  | 8d | 2025-04-23 | 2025-05-02 | 33 | 0d | Catherine; Ruby | 128h |
| 35 | 1.5.2.3 | Deploy Project Web App in an existing site collection MILESTONE | milestone | 0d | 2025-05-02 | 2025-05-02 | 34 | 16d |  |  |
| 36 | 1.6 | **Configure reporting for Project Web App** |  | 16d | 2025-05-05 | 2025-05-26 |  | 0d |  | 168h |
| 37 | 1.6.1 | Configure prerequisites |  | 2d | 2025-05-05 | 2025-05-06 | 34 | 0d | George | 16h |
| 38 | 1.6.2 | Accounts and security groups |  | 2d | 2025-05-07 | 2025-05-08 | 37 | 0d | Henry | 16h |
| 39 | 1.6.3 | Add a login for the report authors group |  | 2d | 2025-05-09 | 2025-05-12 | 38 | 0d | James | 16h |
| 40 | 1.6.4 | Install SQL Server 2008 Analysis Management Objects |  | 3d | 2025-05-13 | 2025-05-15 | 39 | 0d | Penelope; Ruby | 48h |
| 41 | 1.6.5 | Configure Excel Services settings |  | 3d | 2025-05-16 | 2025-05-20 | 40 | 0d | George | 24h |
| 42 | 1.6.6 | Configure Secure Store Service settings |  | 2d | 2025-05-21 | 2025-05-22 | 41 | 0d | Catherine | 16h |
| 43 | 1.6.7 | Populate the Report Authors and Report Viewers Active Directory groups |  | 2d | 2025-05-23 | 2025-05-26 | 42 | 0d | James; Penelope | 32h |
| 44 | 1.6.8 | Configure reporting for Project Web App MILESTONE | milestone | 0d | 2025-05-26 | 2025-05-26 | 43 | 0d |  |  |

Notes:
- 26: http://go.microsoft.com/fwlink/p/?LinkId=257349
- 27: http://go.microsoft.com/fwlink/p/?LinkId=257350
- 30: http://go.microsoft.com/fwlink/p/?LinkId=257352
- 31: http://go.microsoft.com/fwlink/p/?LinkId=257353
- 34: http://go.microsoft.com/fwlink/p/?LinkId=257354
- 36: http://go.microsoft.com/fwlink/p/?LinkId=257355
